# L6Parte1f

Schedule from MS Project, 2022-01-03 to 2023-10-05, status date 2023-10-05, costs in €, A marks actual dates.

## Calendars

- Estándar: Mon-Fri 09:00-13:00, 15:00-19:00; Sat-Sun off.

## Resources

| Resource | Group | Rate |
| --- | --- | --- |
| Jefe de proyecto | Interno | 62.5 |
| Analista | Interno | 54.38 |
| Programador | Interno | 43.75 |
| Telefonica | Externo |  |
| InfoDev | Externo |  |
| Dep. Calidad | Externo |  |
| Analista 2 |  | 56.25 |

## Schedule

| ID | WBS | Task | Type | Duration | Start | Finish | Predecessors | Complete | Remaining | Baseline start | Baseline finish | Baseline duration | Total slack | Constraint | Resources | Work | Actual work | Cost | Baseline cost | Actual cost |
| --- | --- | --- | --- | --- | --- | --- | --- | --- | --- | --- | --- | --- | --- | --- | --- | --- | --- | --- | --- | --- |
| 1 | 1 | **Gestión proyecto** |  | 80d | 2022-01-03 A | 2022-04-22 A |  | 100% |  | 2022-01-03 | 2022-04-22 | 80d |  |  |  | 240h | 240h | 15,000 | 15,000 | 15,000 |
| 2 | 1.1 | Preparacion del proyecto |  | 80d | 2022-01-03 A | 2022-04-22 A |  | 100% |  | 2022-01-03 | 2022-04-22 | 80d |  |  | Jefe de proyecto | 240h | 240h | 15,000 | 15,000 | 15,000 |
| 3 | 1.2 | Aprobacion proyecto Portal | milestone | 0d | 2022-04-22 A | 2022-04-22 A | 2 | 100% |  | 2022-04-22 | 2022-04-22 | 0d |  |  |  |  |  |  |  |  |
| 4 | 2 | **VERSION 0: migración de servidores** |  | 68d | 2022-05-01 A | 2022-08-03 A | 3 | 100% |  | 2022-05-01 | 2022-08-10 | 73d |  | start no earlier than 2022-05-01 |  | 800h | 800h | 53,930 | 52,050 | 53,930 |
| 5 | 2.1 | Adapatación Portal V0 |  | 55d | 2022-05-02 A | 2022-07-15 A |  | 100% |  | 2022-05-02 | 2022-07-01 | 45d |  |  | Analista; Programador | 800h | 800h | 37,550 | 34,050 | 37,550 |
| 6 | 2.2 | **Migración servidores** |  | 68d | 2022-05-01 A | 2022-08-03 A |  | 100% |  | 2022-05-01 | 2022-07-13 | 53d |  |  |  |  |  | 16,380 | 18,000 | 16,380 |
| 7 | 2.2.1 | Inicio migración servidores | milestone | 0d | 2022-05-01 A | 2022-05-01 A |  | 100% |  | 2022-05-01 | 2022-05-01 | 0d |  |  | Telefonica |  |  | 1,800 | 1,800 | 1,800 |
| 8 | 2.2.2 | Fin migración servidores | milestone | 0d | 2022-08-03 A | 2022-08-03 A | 7FS+68d | 100% |  | 2022-07-13 | 2022-07-13 | 0d |  |  | Telefonica |  |  | 14,580 | 16,200 | 14,580 |
| 9 | 2.3 | Versión 0 implantada | milestone | 0d | 2022-08-03 A | 2022-08-03 A | 8 | 100% |  | 2022-08-10 | 2022-08-10 | 0d |  |  |  |  |  |  |  |  |
| 10 | 3 | **VERSION 1: nuevas funcionalidades** |  | 304d | 2022-08-04 A | 2023-10-03 | 9 | 82% | 55.96d | 2022-08-11 | 2023-10-24 | 314d | 0d |  |  | 2296h | 1976h | 140,000 | 139,600 | 123,275 |
| 11 | 3.1 | Matriz de requisitos |  | 20d | 2022-08-04 A | 2022-08-31 A |  | 100% |  | 2022-08-11 | 2022-09-07 | 20d |  |  | Analista | 80h | 80h | 4,350 | 4,350 | 4,350 |
| 12 | 3.2 | **Analisis funcional y de diseño** |  | 38d | 2022-09-01 A | 2022-10-24 | 11 | 99% | 0d | 2022-09-08 | 2022-10-21 | 32d | 0d |  |  | 40h | 40h | 12,675 | 12,675 | 12,675 |
| 13 | 3.2.1 | Analisis de Requisitos |  | 4d | 2022-09-01 A | 2022-09-06 A |  | 100% |  | 2022-09-08 | 2022-09-09 | 2d |  |  | Analista | 16h | 16h | 870 | 870 | 870 |
| 14 | 3.2.2 | Inicio analisis y diseño | milestone | 0d | 2022-09-06 | 2022-09-06 | 13 |  |  | 2022-09-09 | 2022-09-09 | 0d | 34d |  | InfoDev |  |  |  |  |  |
| 15 | 3.2.3 | Verificación analisis y diseño |  | 5d | 2022-10-18 A | 2022-10-24 A | 16SF | 100% |  | 2022-10-19 | 2022-10-21 | 3d |  |  | Analista | 24h | 24h | 1,305 | 1,305 | 1,305 |
| 16 | 3.2.4 | Fin analisis y diseño | milestone | 0d | 2022-10-24 A | 2022-10-24 A | 14FS+30d | 100% |  | 2022-10-21 | 2022-10-21 | 0d |  |  | InfoDev |  |  | 10,500 | 10,500 | 10,500 |
| 17 | 3.3 | **DESARROLLO** |  | 185d | 2022-10-24 A | 2023-07-10 | 12 | 99% | 0d | 2022-10-21 | 2023-07-07 | 185d | 0d |  |  | 1816h | 1816h | 104,075 | 103,375 | 104,075 |
| 18 | 3.3.1 | **Integración página web** |  | 100d | 2022-10-24 A | 2023-03-13 |  | 99% | 0d | 2022-10-21 | 2023-02-24 | 90d | 85d |  |  | 96h | 96h | 26,700 | 26,000 | 26,700 |
| 19 | 3.3.1.1 | **Integración página web fase 1** |  | 65d | 2022-10-24 A | 2023-01-23 A |  | 100% |  | 2022-10-21 | 2023-01-20 | 65d |  |  |  | 96h | 96h | 19,950 | 19,250 | 19,950 |
| 20 | 3.3.1.1.1 | Inicio desarrollo fase 1 | milestone | 0d | 2022-10-24 A | 2022-10-24 A |  | 100% |  | 2022-10-21 | 2022-10-21 | 0d |  |  | InfoDev |  |  | 4,500 | 4,500 | 4,500 |
| 21 | 3.3.1.1.2 | Pruebas aceptación fase 1 |  | 10d | 2023-01-10 A | 2023-01-23 A | 22SF | 100% |  | 2023-01-09 | 2023-01-20 | 10d |  |  | Programador | 96h | 96h | 4,200 | 3,500 | 4,200 |
| 22 | 3.3.1.1.3 | Fin desarrollo fase 1 | milestone | 0d | 2023-01-23 A | 2023-01-23 A | 20FS+65d | 100% |  | 2023-01-20 | 2023-01-20 | 0d |  |  | InfoDev |  |  | 11,250 | 11,250 | 11,250 |
| 23 | 3.3.1.2 | **Integración página web fase 2** |  | 35d | 2023-01-23 A | 2023-03-13 | 19 |  | 35d | 2023-01-20 | 2023-02-24 | 25d | 85d |  |  |  |  | 6,750 | 6,750 | 6,750 |
| 24 | 3.3.1.2.1 | Inicio desarrollo fase 2 | milestone | 0d | 2023-01-23 | 2023-01-23 |  |  |  | 2023-01-20 | 2023-01-20 | 0d | 120d |  | InfoDev |  |  |  |  |  |
| 25 | 3.3.1.2.2 | Fin desarrollo fase 2 | milestone | 0d | 2023-03-13 A | 2023-03-13 A | 24FS+35d | 100% |  | 2023-02-24 | 2023-02-24 | 0d |  |  | InfoDev |  |  | 6,750 | 6,750 | 6,750 |
| 26 | 3.3.2 | Desarrollo servicio comunes |  | 50d | 2023-01-24 A | 2023-04-03 A | 19 | 100% |  | 2023-01-23 | 2023-03-31 | 50d |  |  | Analista; Programador | 720h | 720h | 32,350 | 32,350 | 32,350 |
| 27 | 3.3.3 | Integración funciones CADIS |  | 50d | 2023-04-04 A | 2023-06-12 A | 26 | 100% |  | 2023-04-03 | 2023-06-09 | 50d |  |  | Analista; Programador | 720h | 720h | 32,350 | 32,350 | 32,350 |
| 28 | 3.3.4 | Desarrollo otras funciones |  | 20d | 2023-06-13 A | 2023-07-10 A | 27 | 100% |  | 2023-06-12 | 2023-07-07 | 20d |  |  | Analista; Programador | 280h | 280h | 12,675 | 12,675 | 12,675 |

| ID | WBS | Task | Type | Duration | Start | Finish | Predecessors | Complete | Remaining | Baseline start | Baseline finish | Baseline duration | Total slack | Constraint | Resources | Work | Actual work | Cost | Baseline cost | Actual cost |
| --- | --- | --- | --- | --- | --- | --- | --- | --- | --- | --- | --- | --- | --- | --- | --- | --- | --- | --- | --- | --- |
| 29 | 3.4 | **PRUEBAS** |  | 42d | 2023-07-11 A | 2023-09-06 | 17 | 16% | 35.44d | 2023-07-10 | 2023-09-19 | 52d | 0d |  |  | 280h | 40h | 13,600 | 15,700 | 2,175 |
| 30 | 3.4.1 | Pruebas unitarias y de integración |  | 5d | 2023-07-11 A | 2023-07-17 A |  | 100% |  | 2023-07-10 | 2023-07-14 | 5d |  |  | Analista | 40h | 40h | 2,175 | 2,175 | 2,175 |
| 31 | 3.4.2 | Pruebas de aceptación de usuario |  | 2.5d | 2023-08-01 | 2023-08-03 | 30FS+10d |  |  | 2023-07-31 | 2023-08-11 | 10d | 0d |  | Analista; Analista 2 | 40h |  | 2,212.5 | 4,350 |  |
| 32 | 3.4.3 | Gestión de las modificaciones |  | 22d | 2023-08-03 | 2023-09-04 | 31 |  |  | 2023-08-14 | 2023-09-12 | 22d | 0d |  | Programador | 160h |  | 7,000 | 7,000 |  |
| 33 | 3.4.4 | Pruebas finales |  | 2.5d | 2023-09-04 | 2023-09-06 | 32 |  |  | 2023-09-13 | 2023-09-19 | 5d | 0d |  | Analista; Analista 2 | 40h |  | 2,212.5 | 2,175 |  |
| 34 | 3.5 | Aceptación desarrollo VERSION 1 | milestone | 0d | 2023-09-06 | 2023-09-06 | 29 |  |  | 2023-09-19 | 2023-09-19 | 0d | 0d |  |  |  |  |  |  |  |
| 35 | 3.6 | **AUDITORIA VERSIÓN 1** |  | 9d | 2023-09-06 | 2023-09-19 | 34 |  |  | 2023-09-19 | 2023-10-10 | 15d | 0d |  |  |  |  | 1,800 |  |  |
| 36 | 3.6.1 | Inicio auditoria VERSION 1 | milestone | 0d | 2023-09-06 | 2023-09-06 |  |  |  | 2023-09-19 | 2023-09-19 | 0d | 0d |  | Dep. Calidad |  |  |  |  |  |
| 37 | 3.6.2 | Fin auditoria VERSIÓN 1 | milestone | 0d | 2023-09-19 | 2023-09-19 | 36FS+9d |  |  | 2023-10-10 | 2023-10-10 | 0d | 0d |  | Dep. Calidad |  |  | 1,800 |  |  |
| 38 | 3.7 | Implantación VERSIÓN 1 |  | 10d | 2023-09-20 | 2023-10-03 | 35 |  |  | 2023-10-11 | 2023-10-24 | 10d | 0d |  | Programador | 80h |  | 3,500 | 3,500 |  |
| 39 | 4 | Matriz de requisitos 2 |  | 10d | 2023-05-01 A | 2023-05-12 A |  | 100% |  |  |  |  |  | start no earlier than 2023-05-01 | Analista | 32h | 32h | 1,740 |  | 1,740 |
| 40 | 5 | Analisis de requisitos 2 |  | 2d | 2023-05-15 A | 2023-05-16 A | 39 | 100% |  |  |  |  |  |  | Analista | 6.4h | 6.4h | 348 |  | 348 |
| 41 | 6 | Verificacion analisis y diseño 2 |  | 2d | 2023-05-31 A | 2023-06-01 A | 40FS+10d | 100% |  |  |  |  |  |  | Analista | 9.6h | 9.6h | 522 |  | 522 |
| 42 | 7 | Cierre Proyecto Portal | milestone | 0d | 2023-10-05 | 2023-10-05 | 38FS+2d |  |  | 2023-11-21 | 2023-11-21 | 0d | 0d |  |  |  |  |  |  |  |
